# ProjectPlan

Schedule from MS Project, 2012-08-22 to 2012-10-04.

## Calendars

- Standard: Mon-Fri 08:00-12:00, 13:00-17:00; Sat-Sun off.

## Schedule

| ID | Task | Type | Duration | Start | Finish | Predecessors |
| --- | --- | --- | --- | --- | --- | --- |
| 1 | Brainstorming | manual | 2d | 2012-08-22 | 2012-08-23 |  |
| 2 | Preliminary Schematic | manual | 6d | 2012-08-22 | 2012-08-29 |  |
| 3 | Bill of Materials | manual | 7d | 2012-08-22 | 2012-08-30 |  |
| 4 | Order Parts | manual | 2d | 2012-08-30 | 2012-08-31 |  |
| 5 | Breadboard Proof of Concept | manual | 5d | 2012-08-31 | 2012-09-06 |  |
| 6 | Project Plan | milestone, manual | 0d | 2012-09-20 | 2012-09-20 | 7, 8, 9 |
| 7 | Project Plan Document | manual | 3d | 2012-09-12 | 2012-09-14 |  |
| 8 | Project Plan Presentation | manual | 4d | 2012-09-14 | 2012-09-19 |  |
| 9 | Gant Chart | manual | 1d | 2012-09-06 | 2012-09-06 |  |
| 10 | PCB Layout | manual | 1d | 2012-10-04 | 2012-10-04 | 11, 12, 13 |
| 11 | Create PCB Packages | manual | 12d | 2012-09-06 | 2012-09-21 |  |
| 12 | Place Parts on PCB | manual | 5d | 2012-09-21 | 2012-09-27 |  |
| 13 | Route Parts on PCB | manual | 5d | 2012-09-27 | 2012-10-03 |  |
| 14 | Order PCBs | manual | 1d | 2012-10-03 | 2012-10-03 |  |
